# Phase 1 - Stuart Example

Schedule from Primavera P6, 2018-05-01 to 2019-05-23, data date 2018-05-01, costs in CAD, A marks actual dates.
Must finish by 2019-05-24

## Calendars

- TSE Office Calendar 2016: Mon 08:00-16:00; Tue-Fri 08:00-12:00, 13:00-17:00; Sat-Sun off. Exceptions (off unless hours are given): 2018-05-21, 2018-07-02, 2018-08-06, 2018-09-03, 2018-10-08, 2018-12-24 to 2018-12-28, 2018-12-31 to 2019-01-01, 2019-02-18, 2019-04-19, 2019-05-20.

## Resources

| Resource | Group | Unit | Rate |
| --- | --- | --- | --- |
| Process Engineering | labor |  | 100 |
| Mechanical Drafting | labor |  | 100 |
| Pipeline Engineering | labor |  | 100 |
| Pipeline Drafting | labor |  | 100 |
| Civil Engineering | labor |  | 100 |
| Civil Drafting | labor |  | 100 |
| Electrical Engineering | labor |  | 100 |
| Electrical Drafting | labor |  | 100 |
| Instrument Engineering | labor |  | 100 |
| Piping Engineering | labor |  | 100 |
| Quality Control | labor |  | 100 |
| Project Controls | labor |  | 100 |
| Administration | labor |  | 100 |
| Project Engineering | labor |  | 100 |
| Civil Piling | material |  | 100 |
| Civil Structural Steel | material |  | 100 |
| Pipe & Fittings | material | T(Fe) | 100 |
| Large Bore Valves | material |  | 100 |

## Schedule

| ID | WBS | Activity | Duration | Start | Finish | Predecessors | Total float | Free float | BI Project | FCO West SAP - WBS | FCO WEST SAP Disciplines | POWERBI Discipline |
| --- | --- | --- | --- | --- | --- | --- | --- | --- | --- | --- | --- | --- |
|  | 1 | **SAP Phase 1** |  | 2018-05-01 | 2018-12-05 |  |  |  |  |  |  |  |
|  | 2 | **Transition from FEED** |  |  |  |  |  |  |  |  |  |  |
|  | 1 | **Phase 1** |  | 2018-05-01 | 2018-12-05 |  |  |  |  |  |  |  |
|  | 8 | **Phase 1 Modeling** |  | 2018-05-01 | 2018-09-24 |  |  |  |  |  |  |  |
|  | 1 | **Process Engineering & Design** |  | 2018-05-01 | 2018-09-24 |  |  |  |  |  |  |  |
| A6210 |  | Phase 1 - IFA P&IDs & LDTs | 20d | 2018-05-01 | 2018-05-29 |  | 93d | 0d | Phase 1 | 14 | Process Engineering |  |
| A5950 |  | Phase 1 - P&IDs Squad Check | 5d | 2018-05-30 | 2018-06-05 | A6210 | 93d | 0d | Phase 1 |  | Process Engineering |  |
| A5940 |  | Phase 1 - IFD P&IDs & LDTs | 15d | 2018-06-06 | 2018-06-26 | A5950 | 93d | 41d | Phase 1 | 14 | Process Engineering |  |
| A2080 |  | Phase 1 - IFC P&IDs & LDTs | 15d | 2018-08-27 | 2018-09-17 | A5950, A2200, A5940 | 52d | 0d | Phase 1 | 14 | Process Engineering | Model |
| A2110 |  | Phase 1 - IFC P&IDs & LDTs DC | 5d | 2018-09-18 | 2018-09-24 | A2080 | 52d | 16d | Phase 1 | 14 | Process Engineering |  |
|  | 9 | **Mechanical Modeling** |  | 2018-05-01 | 2018-07-13 |  |  |  |  |  |  |  |
| A2120 |  | Phase 1 - 30% Pipeline Drafting | 15d | 2018-05-01 | 2018-05-22 |  | 0d |  | Phase 1 | 14 | Mechanical Drafting |  |
| A6190 |  | Phase 1 - 60% Pipeline Drafting | 10d | 2018-06-29 | 2018-07-13 | A6180 | 6d | 0d | Phase 1 | 14 | Mechanical Drafting |  |
|  | 2 | **Model Review** |  | 2018-06-13 | 2018-08-29 |  |  |  |  |  |  |  |
|  | 1 | **30% Model Review** |  | 2018-06-13 | 2018-06-28 |  |  |  |  |  |  |  |
| A6150 |  | Phase 1 - 30% Internal Model Review | 1d | 2018-06-13 | 2018-06-13 | A2130 | 0d |  | Phase 1 | 14 | Mechanical Drafting |  |
| A6160 |  | Phase 1 - Incorporate Changes | 5d | 2018-06-14 | 2018-06-20 | A6150 | 0d |  | Phase 1 | 14 | Mechanical Drafting |  |
| A6170 |  | Phase 1 - 30% Client Review | 1d | 2018-06-21 | 2018-06-21 | A6160 | 0d |  | Phase 1 | 14 | Mechanical Drafting | Model |
| A6180 |  | Phase 1 - Incorporate Changes | 5d | 2018-06-22 | 2018-06-28 | A6170 | 0d |  | Phase 1 | 14 | Mechanical Drafting |  |
|  | 6 | **60% Model Review** |  | 2018-07-30 | 2018-08-15 |  |  |  |  |  |  |  |
| A2140 |  | Phase 1 - 60% Internal Model Review | 1d | 2018-07-30 | 2018-07-30 | A2130, A6180, A6200 | 6d | 0d | Phase 1 | 14 | Mechanical Drafting |  |
| A2150 |  | Phase 1 - Incorporate Changes | 5d | 2018-07-31 | 2018-08-07 | A2140 | 6d | 0d | Phase 1 | 14 | Mechanical Drafting |  |
| A2160 |  | Phase 1 - 60% Client Review | 1d | 2018-08-08 | 2018-08-08 | A2150 | 6d | 0d | Phase 1 | 14 | Mechanical Drafting | Model |
| A2170 |  | Phase 1 - Incorporate Changes | 5d | 2018-08-09 | 2018-08-15 | A2160 | 6d | 0d | Phase 1 | 14 | Mechanical Drafting |  |

| ID | WBS | Activity | Duration | Start | Finish | Predecessors | Total float | Free float | BI Project | FCO West SAP - WBS | FCO WEST SAP Disciplines | POWERBI Discipline |
| --- | --- | --- | --- | --- | --- | --- | --- | --- | --- | --- | --- | --- |
|  | 7 | **90% Model Review** |  | 2018-08-16 | 2018-08-29 |  |  |  |  |  |  |  |
| A2180 |  | Phase 1 - 90% Internal Model Review | 1d | 2018-08-16 | 2018-08-16 | A2170 | 6d | 0d | Phase 1 | 14 | Mechanical Drafting |  |
| A2190 |  | Phase 1 - Incorporate Changes | 5d | 2018-08-17 | 2018-08-23 | A2180 | 6d | 0d | Phase 1 | 14 | Mechanical Drafting |  |
| A2200 |  | Phase 1 - 90% Client Review | 1d | 2018-08-24 | 2018-08-24 | A2190 | 6d | 0d | Phase 1 | 14 | Mechanical Drafting | Model |
| A2210 |  | Phase 1 - Incorporate Changes | 3d | 2018-08-27 | 2018-08-29 | A2200 | 6d | 0d | Phase 1 | 14 | Mechanical Drafting |  |
|  | 7 | **Stress Engineering & Analysis** |  | 2018-05-23 | 2018-07-27 |  |  |  |  |  |  |  |
| A2130 |  | Phase 1 - 30% Pipeline Stress Analysis | 15d | 2018-05-23 | 2018-06-12 | A2120 | 0d |  | Phase 1 | 14 | Piping Stress |  |
| A6200 |  | Phase 1 - 60% Pipeline Stress Analysis | 10d | 2018-07-16 | 2018-07-27 | A6190 | 6d | 0d | Phase 1 | 14 | Piping Stress |  |
|  | 3 | **Phase 1 Package** |  | 2018-08-16 | 2018-12-05 |  |  |  |  |  |  |  |
|  | 4 | **Mechanical Drafting & Design** |  | 2018-08-30 | 2018-10-24 |  |  |  |  |  |  |  |
| A2620 |  | Phase 1 - IFA Pipeline Drawing Package | 15d | 2018-08-30 | 2018-09-20 | A2210 | 6d | 0d | Phase 1 | 9 | Mechanical Drafting |  |
| A2630 |  | Phase 1 - Squad Check Pipeline Drawing Package | 5d | 2018-09-21 | 2018-09-27 | A2620 | 6d | 0d | Phase 1 | 9 | Mechanical Drafting |  |
| A2640 |  | Phase 1 - IFC Pipeline Drawing Package | 10d | 2018-09-28 | 2018-10-12 | A2630, A2660, A2670 | 6d | 0d | Phase 1 | 9 | Mechanical Drafting |  |
| A2650 |  | Phase 1 - IFC Pipeline Drawing Package DC | 5d | 2018-10-18 | 2018-10-24 | A2640, A2690, A2680 | 41d | 5d | Phase 1 | 9 | Mechanical Drafting |  |
|  | 5 | **Stress Engineering & Analysis** |  | 2018-09-21 | 2018-10-17 |  |  |  |  |  |  |  |
| A2660 |  | Phase 1 - IFA Drawing Package Check | 5d | 2018-09-21 | 2018-09-27 | A2620 | 6d | 0d | Phase 1 | 9 | Piping Stress |  |
| A2680 |  | Phase 1 - IFC Drawing Package Stamp | 3d | 2018-10-15 | 2018-10-17 | A2640 | 6d | 0d | Phase 1 | 9 | Piping Stress |  |
|  | 8 | **Pipeline Engineering** |  | 2018-09-21 | 2018-10-17 |  |  |  |  |  |  |  |
| A2670 |  | Phase 1 - IFA Drawing Package Check | 5d | 2018-09-21 | 2018-09-27 | A2620 | 6d | 0d | Phase 1 | 9 | Pipeline Engineering |  |
| A2690 |  | Phase 1 - FC Drawing Package Check | 3d | 2018-10-15 | 2018-10-17 | A2640 | 6d | 0d | Phase 1 | 9 | Pipeline Engineering |  |
|  | 6 | **Civil Engineering & Design** |  | 2018-08-16 | 2018-11-02 |  |  |  |  |  |  |  |
|  | 1 | **Piling** |  | 2018-08-16 | 2018-10-19 |  |  |  |  |  |  |  |
| A2700 |  | Phase 1 - IFA Piling Package | 20d | 2018-08-16 | 2018-09-13 | A2170 | 39d | 0d | Phase 1 | 9 | Civil |  |
| A2710 |  | Phase 1 - Squad Check - Piling Package | 5d | 2018-09-14 | 2018-09-20 | A2700 | 39d | 0d | Phase 1 | 9 | Civil |  |
| A2720 |  | Phase 1 - IFC Piling Package | 15d | 2018-09-21 | 2018-10-12 | A2710 | 39d | 0d | Phase 1 | 9 | Civil |  |
| A2730 |  | Phase 1 - IFC Piling Package DC | 5d | 2018-10-15 | 2018-10-19 | A2720 | 44d | 5d | Phase 1 | 9 | Civil |  |

| ID | WBS | Activity | Duration | Start | Finish | Predecessors | Total float | Free float | BI Project | FCO West SAP - WBS | FCO WEST SAP Disciplines |
| --- | --- | --- | --- | --- | --- | --- | --- | --- | --- | --- | --- |
|  | 2 | **Structural** |  | 2018-08-30 | 2018-11-02 |  |  |  |  |  |  |
| A2740 |  | Phase 1 - IFA Structural Steel Package | 20d | 2018-08-30 | 2018-09-27 | A2210 | 29d | 0d | Phase 1 | 9 | Civil |
| A2750 |  | Phase 1 - Squad Check - Structural Steel Package | 5d | 2018-09-28 | 2018-10-04 | A2740 | 29d | 0d | Phase 1 | 9 | Civil |
| A2760 |  | Phase 1 - IFC Structural Steel Package | 15d | 2018-10-05 | 2018-10-26 | A2750 | 29d | 0d | Phase 1 | 9 | Civil |
| A2770 |  | Phase 1 - IFC Structural Steel Package DC | 5d | 2018-10-29 | 2018-11-02 | A2760 | 34d | 5d | Phase 1 | 9 | Civil |
|  | 7 | **Electrical Engineering & Design** |  | 2018-10-18 | 2018-12-05 |  |  |  |  |  |  |
| A2780 |  | Phase 1 - IFA Electrical Package | 15d | 2018-10-18 | 2018-11-07 | A2680, A2690 | 6d | 0d | Phase 1 | 9 | Electrical |
| A2790 |  | Phase 1 - Squad Check - Electrical Package | 5d | 2018-11-08 | 2018-11-14 | A2780 | 6d | 0d | Phase 1 | 9 | Electrical |
| A2800 |  | Phase 1 - IFC Electrical Package | 10d | 2018-11-15 | 2018-11-28 | A2790 | 6d | 0d | Phase 1 | 9 | Electrical |
| A2810 |  | Phase 1 - IFC Electrical Package DC | 5d | 2018-11-29 | 2018-12-05 | A2800 | 11d | 5d | Phase 1 | 9 | Electrical |
|  | 3 | **CWPS** |  | 2018-10-15 | 2019-01-04 |  |  |  |  |  |  |
|  | 3 | **Phase 1 Package** |  | 2018-10-15 | 2019-01-04 |  |  |  |  |  |  |
|  | 1 | **Phase 1 Civil Piling** |  | 2018-10-15 | 2018-11-09 |  |  |  |  |  |  |
| A5000 |  | Phase 1 - Civil Piling - Engineering Review & Sign-off | 10d | 2018-10-15 | 2018-10-26 | A2720 | 39d | 0d | Phase 1 |  | Civil |
| A5010 |  | Phase 1 - Civil Piling - Issue Through DC | 10d | 2018-10-29 | 2018-11-09 | A5000, A2730 | 39d | 33d | Phase 1 |  | Civil |
|  | 2 | **Phase 1 Civil Structural** |  | 2018-10-29 | 2018-11-23 |  |  |  |  |  |  |
| A5020 |  | Phase 1 - Civil Structural - Engineering Review & Sign-off | 10d | 2018-10-29 | 2018-11-09 | A2760 | 29d | 0d | Phase 1 |  | Civil |
| A5030 |  | Phase 1 - Civil Structural - Issue Through DC | 10d | 2018-11-12 | 2018-11-23 | A5020, A2770 | 29d | 23d | Phase 1 |  | Civil |
|  | 3 | **Phase 1 Mechanical / Insulation** |  | 2018-10-18 | 2018-11-14 |  |  |  |  |  |  |
| A5040 |  | Phase 1 - Mechanical / Insulation - Engineering Review & Sign-off | 10d | 2018-10-18 | 2018-10-31 | A2680, A2110 | 36d | 0d | Phase 1 |  | Mechanical Drafting |
| A5050 |  | Phase 1 - Mechanical / Insulation - Issue Through DC | 10d | 2018-11-01 | 2018-11-14 | A5040, A2650 | 36d | 30d | Phase 1 |  | Mechanical Drafting |
|  | 4 | **Phase 1 Electrical / Fiber** |  | 2018-11-29 | 2019-01-04 |  |  |  |  |  |  |
| A5060 |  | Phase 1 - Electrical / Fiber - Engineering Review & Sign-off | 10d | 2018-11-29 | 2018-12-12 | A2800 | 6d | 0d | Phase 1 |  | Electrical |
| A5070 |  | Phase 1 - Electrical / Fiber - Issue Through DC | 10d | 2018-12-13 | 2019-01-04 | A5060, A2810 | 6d | 0d | Phase 1 |  | Electrical |

| ID | WBS | Activity | Type | Duration | Start | Finish | Predecessors | Complete | Remaining | Planned start | Planned finish | Total float | Free float | Constraint | Resources | Cost | Actual cost | BI Project | FCO WEST SAP Disciplines |
| --- | --- | --- | --- | --- | --- | --- | --- | --- | --- | --- | --- | --- | --- | --- | --- | --- | --- | --- | --- |
|  | 4 | **Procurement** |  |  | 2018-06-29 | 2019-05-23 |  |  |  |  |  |  |  |  |  |  |  |  |  |
| A6140 |  | Phase 1 - CWP Bid Period |  | 90d | 2019-01-07 | 2019-05-14 | A5070, A5050, A5030, A5010 |  |  |  |  | 6d |  | finish on or before 2019-05-31 |  |  |  | Phase 1 |  |
| A6130 |  | Phase 1 - Construction Date |  | 1d | 2019-05-23 | 2019-05-23 | A6080, A6100, A6120, A6060 |  |  |  |  | 0d |  | finish on or before 2019-07-26 |  |  |  | Phase 1 |  |
|  | 1 | **Civil** |  |  | 2018-08-09 | 2019-03-27 |  |  |  |  |  |  |  |  |  |  |  |  |  |
| A6050 |  | Phase 1 - MR - PO - Piling |  | 20d | 2018-08-09 | 2018-09-06 | A2160 |  |  |  |  | 113d | 0d |  |  |  |  | Phase 1 |  |
| A6070 |  | Phase 1 - MR - PO - Structural Steel |  | 20d | 2018-08-30 | 2018-09-27 | A2210 |  |  |  |  | 38d | 0d |  |  |  |  | Phase 1 |  |
| A6060 |  | Phase 1 - PO - Delivery - Piling |  | 60d | 2018-09-07 | 2018-11-30 | A6050 |  |  |  |  | 113d |  |  | Civil Piling [480] | 48,000 |  | Phase 1 |  |
| A6080 |  | Phase 1 - PO - Delivery - Structural Steel |  | 120d | 2018-09-28 | 2019-03-27 | A6070 |  |  |  |  | 38d |  |  | Civil Structural Steel [2000] | 200,000 |  | Phase 1 |  |
|  | 2 | **Mechanical** |  |  | 2018-06-29 | 2019-05-22 |  |  |  |  |  |  |  |  |  |  |  |  |  |
| A6090 |  | Phase 1 - MR - PO - Pipe & Fittings |  | 20d | 2018-06-29 | 2018-07-27 | A6180 |  |  |  |  | 0d |  |  |  |  |  | Phase 1 |  |
| A6110 |  | Phase 1 - MR - PO - Large Bore Valves |  | 20d | 2018-06-29 | 2018-07-27 | A6180 |  |  |  |  | 0d |  |  |  |  |  | Phase 1 |  |
| A6100 |  | Phase 1 - PO - Delivery - Pipe & Fittings |  | 200d | 2018-07-30 | 2019-05-22 | A6090 |  |  |  |  | 0d |  |  | Pipe & Fittings [1600 T(Fe)] | 160,000 |  | Phase 1 |  |
| A6120 |  | Phase 1 - PO - Delivery - Large Bore Valves |  | 200d | 2018-07-30 | 2019-05-22 | A6110 |  |  |  |  | 0d |  |  | Large Bore Valves [960] | 96,000 |  | Phase 1 |  |
|  | 3 | **Electrical** |  |  |  |  |  |  |  |  |  |  |  |  |  |  |  |  |  |
|  | 2 | **Resources** |  |  | 2018-05-01 | 2019-01-04 |  |  |  |  |  |  |  |  |  |  |  |  |  |
| A5970 |  | Phase 1 - Mechanical Engineering | level of effort | 109d | 2018-05-01 A | 2018-09-27 | A2120 SS, A6050 FF, A6070 FF, A6110 FF, A6090 FF | 5% | 104d | 2018-05-01 | 2018-10-04 | 98d | 0d |  | Pipeline Engineering [450 h] | 45,000 | 2,064.22 | Phase 1 | Pipeline Engineering |
| A5980 |  | Phase 1 - Mechanical Design & Drafting | level of effort | 127d | 2018-05-01 A | 2018-10-24 | A2120 SS, A2650 FF | 4% | 122d | 2018-05-01 | 2018-10-31 | 41d | 0d |  | Pipeline Drafting [4500 h] | 450,000 | 17,716.54 | Phase 1 | Mechanical Drafting |
| A6030 |  | Phase 1 - Project Services | level of effort | 172d | 2018-05-01 A | 2019-01-04 | A2120 SS, A5070 FF | 3% | 167d | 2018-05-01 | 2019-01-11 | 6d | 0d |  | Quality Control [100 h]; Project Controls [400 h]; Administration [200 h]; Project Engineering [600 h] | 130,000 | 4,779.08 | Phase 1 | Project Management |
| A5990 |  | Phase 1 - Civil Design & Drafting | level of effort | 114d | 2018-05-23 | 2018-11-02 | A2130 SS, A2770 FF |  |  |  |  | 34d | 0d |  | Civil Engineering [2125 h]; Civil Drafting [2125 h] | 425,000 |  | Phase 1 | Civil |
| A6020 |  | Phase 1 - Stress Analysis | level of effort | 107d | 2018-05-23 | 2018-10-24 | A2130 SS, A2650 FF |  |  |  |  | 41d | 0d |  | Piping Engineering [2000 h] | 200,000 |  | Phase 1 | Piping Stress |
| A5960 |  | Phase 1 - Process | level of effort | 76d | 2018-06-06 | 2018-09-24 | A5940 SS, A2110 FF |  |  |  |  | 52d | 0d |  | Process Engineering [375 h]; Mechanical Drafting [375 h] | 75,000 |  | Phase 1 | Process Engineering |
| A6000 |  | Phase 1 - Electrical Design & Drafting | level of effort | 100d | 2018-07-16 | 2018-12-05 | A2140 SS-10d, A2810 FF |  |  |  |  | 11d | 0d |  | Electrical Engineering [1127.5 h]; Electrical Drafting [1127.5 h] | 225,500 |  | Phase 1 | Electrical |
| A6010 |  | Phase 1 - Instrumentation & Controls | level of effort | 0d | 2018-08-09 | 2018-08-09 | A6050 SS, A6090 FF |  |  |  |  | -7d | 0d |  | Instrument Engineering |  |  | Phase 1 | Electrical |
| A6040 |  | Phase 1 - CWP Production | level of effort | 53d | 2018-10-15 | 2019-01-04 | A5000 SS, A5070 FF |  |  |  |  | 6d | 0d |  | Project Engineering [100 h] | 10,000 |  | Phase 1 | Project Management |

Notes:
- A6030: Expenses: Hotel 0

## Activity codes

| Code | Value | Meaning |
| --- | --- | --- |
| BI Project | Phase 1 | P1 |
| FCO West SAP - WBS | 14 | Above Ground |
| FCO West SAP - WBS | 9 | CWA1-04 |
